# PRJ-0101 — Substituição do Core de Contas

Schedule from MS Project XML, 2025-09-01 to 2027-06-30, status date 2026-07-31, costs in R$, A marks actual dates.
Programa Modernização do Core Bancário (PRG-01)
Nortávia Serviços Financeiros S.A.

## Calendars

- Padrão Nortávia 5x8: Mon-Fri 08:00-12:00, 13:00-17:00; Sat-Sun off.

## Resources

| Resource | Group | Rate |
| --- | --- | --- |
| Rafa Quintela | PMO | 180 |
| Yuri Bencardino | Arquitetura | 230 |
| Dara Loureiro | Dados | 220 |
| Sol Verissimo | Negócio | 130 |
| Emi Kobayashi | Qualidade | 140 |
| Ivo Trancoso | Segurança | 240 |
| Vera Pontes | Infraestrutura | 170 |
| Alex Marchetti | PMO | 210 |

## Schedule

| ID | WBS | Task | Type | Duration | Start | Finish | Predecessors | Complete | Remaining | Baseline start | Baseline finish | Baseline duration | Resources | Work | Actual work | Cost | Baseline cost | Actual cost |
| --- | --- | --- | --- | --- | --- | --- | --- | --- | --- | --- | --- | --- | --- | --- | --- | --- | --- | --- |
| 1 | 1 | **Gestão e Governança** |  | 478d | 2025-09-01 A | 2027-06-30 |  | 64% |  | 2025-09-01 | 2027-03-31 | 415d |  | 12200h | 7790h | 24,400 | 20,700 | 15,490 |
| 2 | 1.1 | Mobilização e plano do projeto |  | 45d | 2025-09-01 A | 2025-10-31 A |  | 100% |  | 2025-09-01 | 2025-10-29 | 43d | Rafa Quintela; Alex Marchetti [25%] | 2400h | 2400h | 4,600 | 4,200 | 4,600 |
| 3 | 1.2 | Gate G2 — Planejamento e baseline aprovados | milestone | 0d | 2025-11-03 A | 2025-11-03 A | 2 | 100% |  | 2025-10-30 | 2025-10-30 | 0d |  |  |  |  |  |  |
| 4 | 1.3 | Gate G3 — Autorização de execução | milestone | 0d | 2025-11-28 A | 2025-11-28 A | 3 | 100% |  | 2025-11-28 | 2025-11-28 | 0d |  |  |  |  |  |  |
| 5 | 1.4 | Escritório de projeto e reporting mensal |  | 434d | 2025-11-03 A | 2027-06-30 | 3 | 55% | 195.25d | 2025-10-30 | 2027-03-31 | 372d | Rafa Quintela [50%]; Alex Marchetti [25%] | 9800h | 5390h | 19,800 | 16,500 | 10,890 |
| 6 | 2 | **Análise e Arquitetura** |  | 165d | 2025-09-15 A | 2026-04-30 A |  | 100% |  | 2025-09-15 | 2026-02-27 | 145d |  | 19800h | 19800h | 36,600 | 31,900 | 36,600 |
| 7 | 2.1 | Levantamento de requisitos de contas e produtos |  | 100d | 2025-09-15 A | 2026-01-30 A |  | 100% |  | 2025-09-15 | 2025-12-19 | 85d | Sol Verissimo; Yuri Bencardino [50%] | 8600h | 8600h | 14,200 | 12,500 | 14,200 |
| 8 | 2.2 | Modelo de domínio e dicionário de dados |  | 85d | 2025-11-03 A | 2026-02-27 A | 7SF+1d | 100% |  | 2025-10-20 | 2026-01-30 | 75d | Dara Loureiro | 5200h | 5200h | 9,800 | 8,600 | 9,800 |
| 9 | 2.3 | Arquitetura alvo do core de contas |  | 105d | 2025-12-01 A | 2026-04-24 A | 8SF+0.5d | 100% |  | 2025-11-17 | 2026-02-27 | 75d | Yuri Bencardino; Ivo Trancoso [25%] | 6000h | 6000h | 12,600 | 10,800 | 12,600 |
| 10 | 2.4 | Marco — Arquitetura alvo aprovada pelo comitê técnico | milestone | 0d | 2026-04-30 A | 2026-04-30 A | 9 | 100% |  | 2026-02-27 | 2026-02-27 | 0d |  |  |  |  |  |  |
| 11 | 3 | **Construção do Core** |  | 261d | 2026-03-02 A | 2027-03-01 |  | 43% |  | 2026-02-02 | 2026-11-27 | 214d |  | 75000h | 32456h | 138,800 | 123,800 | 59,311 |
| 12 | 3.1 | **Cadastro de contas** |  | 174d | 2026-03-02 A | 2026-10-30 |  | 68% |  | 2026-02-02 | 2026-08-28 | 145d |  | 31600h | 21420h | 57,300 | 51,000 | 38,785 |
| 13 | 3.1.1 | Serviços de abertura de conta |  | 110d | 2026-03-02 A | 2026-07-31 | 8 | 85% | 16.5d | 2026-02-02 | 2026-06-26 | 93d | Yuri Bencardino; Sol Verissimo | 18000h | 15300h | 32,500 | 29,000 | 27,625 |
| 14 | 3.1.2 | Serviços de manutenção cadastral |  | 110d | 2026-06-01 A | 2026-10-30 | 13SF+0.67d | 45% | 60.5d | 2026-05-04 | 2026-08-28 | 93d | Yuri Bencardino; Sol Verissimo | 13600h | 6120h | 24,800 | 22,000 | 11,160 |
| 15 | 3.2 | Motor de lançamentos e saldos |  | 165d | 2026-05-04 A | 2026-12-18 | 9 | 38% | 102.25d | 2026-04-01 | 2026-10-30 | 145d | Yuri Bencardino; Dara Loureiro | 25000h | 9500h | 46,500 | 42,000 | 17,670 |
| 16 | 3.3 | Integrações com canais digitais |  | 130d | 2026-08-03 A | 2027-01-29 | 13 | 12% | 114.38d | 2026-07-01 | 2026-11-27 | 110d | Vera Pontes | 12800h | 1536h | 23,800 | 21,000 | 2,856 |
| 17 | 3.4 | Hardening de segurança e trilhas de auditoria |  | 85d | 2026-11-02 | 2027-02-26 | 14 |  |  | 2026-08-03 | 2026-11-27 | 75d | Ivo Trancoso | 5600h |  | 11,200 | 9,800 |  |
| 18 | 3.5 | Marco — Core funcional em ambiente de teste | milestone | 0d | 2027-03-01 | 2027-03-01 | 17 |  |  | 2026-11-30 | 2026-11-30 | 0d |  |  |  |  |  |  |
| 19 | 4 | **Migração de Dados** |  | 284d | 2026-04-01 A | 2027-05-03 |  | 24% |  | 2026-03-02 | 2027-01-29 | 225d |  | 30800h | 7380h | 57,400 | 50,000 | 13,716 |
| 20 | 4.1 | Extração e perfilagem do legado |  | 110d | 2026-04-01 A | 2026-08-31 | 8 | 72% | 30.75d | 2026-03-02 | 2026-07-31 | 93d | Dara Loureiro | 7200h | 5184h | 13,400 | 11,500 | 9,648 |
| 21 | 4.2 | Rotinas de transformação e carga |  | 88d | 2026-07-01 A | 2026-10-30 | 20SF+1d | 18% | 72.12d | 2026-06-01 | 2026-09-30 | 77d | Dara Loureiro | 12200h | 2196h | 22,600 | 20,000 | 4,068 |
| 22 | 4.3 | Ensaios de migração — 3 ciclos |  | 130d | 2026-11-02 | 2027-04-30 | 21 |  |  | 2026-09-01 | 2027-01-29 | 110d | Vera Pontes | 11400h |  | 21,400 | 18,500 |  |
| 23 | 4.4 | Marco — Ensaio de migração aprovado | milestone | 0d | 2027-05-03 | 2027-05-03 | 22 |  |  | 2027-02-01 | 2027-02-01 | 0d |  |  |  |  |  |  |
| 24 | 5 | **Testes e Qualidade** |  | 130d | 2026-12-01 | 2027-05-31 |  |  |  | 2026-10-01 | 2027-02-26 | 110d |  | 22800h |  | 39,000 | 34,500 |  |
| 25 | 5.1 | Testes integrados de sistema (SIT) |  | 87d | 2026-12-01 | 2027-03-31 | 14 |  |  | 2026-10-01 | 2027-01-29 | 75d | Emi Kobayashi | 14000h |  | 23,800 | 21,000 |  |
| 26 | 5.2 | Testes de aceitação do usuário (UAT) |  | 65d | 2027-03-02 | 2027-05-31 | 18 |  |  | 2026-12-01 | 2027-02-26 | 55d | Emi Kobayashi | 8800h |  | 15,200 | 13,500 |  |

| ID | WBS | Task | Type | Duration | Start | Finish | Predecessors | Baseline start | Baseline finish | Baseline duration | Resources | Work | Cost | Baseline cost |
| --- | --- | --- | --- | --- | --- | --- | --- | --- | --- | --- | --- | --- | --- | --- |
| 27 | 6 | **Implantação e Transição** |  | 43d | 2027-05-03 | 2027-06-30 |  | 2027-02-01 | 2027-03-31 | 43d |  | 12200h | 22,800 | 23,100 |
| 28 | 6.1 | Preparação de cutover e plano de reversão |  | 30d | 2027-05-03 | 2027-06-11 | 25 | 2027-02-01 | 2027-03-12 | 30d | Vera Pontes | 8000h | 14,900 | 13,600 |
| 29 | 6.2 | Gate G4 — Aprovação de go-live | milestone | 0d | 2027-06-14 | 2027-06-14 | 26, 28 | 2027-03-15 | 2027-03-15 | 0d |  |  |  |  |
| 30 | 6.3 | Cutover e go-live |  | 11d | 2027-06-15 | 2027-06-29 | 29 | 2027-03-16 | 2027-03-30 | 12d | Rafa Quintela | 4200h | 7,900 | 9,500 |
| 31 | 6.4 | Marco — Encerramento da Onda 1 | milestone | 0d | 2027-06-30 | 2027-06-30 | 30 | 2027-03-31 | 2027-03-31 | 0d |  |  |  |  |
