# PRJ-0102 — Migração do Motor de Pagamentos Pix

Schedule from MS Project XML, 2026-01-12 to 2027-01-23, status date 2026-07-31, costs in R$, A marks actual dates.
Programa Modernização do Core Bancário (PRG-01)
Nortávia Serviços Financeiros S.A.

## Calendars

- Padrão Nortávia 5x8: Mon-Fri 08:00-12:00, 13:00-17:00; Sat-Sun off.

## Resources

| Resource | Group | Rate |
| --- | --- | --- |
| Nina Salgado | PMO | 180 |
| Yuri Bencardino | Arquitetura | 230 |
| Ivo Trancoso | Segurança | 240 |
| Emi Kobayashi | Qualidade | 140 |
| Sol Verissimo | Negócio | 130 |
| Vera Pontes | Infraestrutura | 170 |

## Schedule

| ID | WBS | Task | Type | Duration | Start | Finish | Predecessors | Complete | Remaining | Baseline start | Baseline finish | Baseline duration | Resources | Work | Actual work | Cost | Baseline cost | Actual cost |
| --- | --- | --- | --- | --- | --- | --- | --- | --- | --- | --- | --- | --- | --- | --- | --- | --- | --- | --- |
| 1 | 1 | **Preparação e Governança** |  | 35d | 2026-01-12 A | 2026-02-27 A |  | 100% |  | 2026-01-12 | 2026-02-20 | 30d |  | 1800h | 1800h | 3,800 | 3,600 | 3,800 |
| 2 | 1.1 | Plano de migração e baseline aprovada |  | 30d | 2026-01-12 A | 2026-02-20 A |  | 100% |  | 2026-01-12 | 2026-02-13 | 29d | Nina Salgado | 1800h | 1800h | 3,800 | 3,600 | 3,800 |
| 3 | 1.2 | Gate G3 — Autorização de execução | milestone | 0d | 2026-02-27 A | 2026-02-27 A | 2 | 100% |  | 2026-02-20 | 2026-02-20 | 0d |  |  |  |  |  |  |
| 4 | 2 | **Adequação Regulatória e Arquitetura** |  | 109d | 2026-02-02 A | 2026-07-01 A |  | 100% |  | 2026-02-02 | 2026-06-22 | 101d |  | 7800h | 7800h | 15,300 | 14,800 | 15,300 |
| 5 | 2.1 | Requisitos do arranjo de pagamentos instantâneos |  | 64d | 2026-02-02 A | 2026-04-30 A | 2SF+0.25d | 100% |  | 2026-02-02 | 2026-04-24 | 62d | Sol Verissimo | 3600h | 3600h | 6,400 | 6,200 | 6,400 |
| 6 | 2.2 | Arquitetura do novo motor Pix |  | 77d | 2026-03-16 A | 2026-06-30 A | 5SF+0.29d | 100% |  | 2026-03-09 | 2026-06-19 | 75d | Yuri Bencardino | 4200h | 4200h | 8,900 | 8,600 | 8,900 |
| 7 | 2.3 | Marco — Arquitetura homologada pelo comitê técnico | milestone | 0d | 2026-07-01 A | 2026-07-01 A | 6 | 100% |  | 2026-06-22 | 2026-06-22 | 0d |  |  |  |  |  |  |
| 8 | 3 | **Construção do Motor** |  | 139d | 2026-05-04 A | 2026-11-16 |  | 68% |  | 2026-04-27 | 2026-10-19 | 125d |  | 33200h | 22592h | 62,800 | 61,200 | 42,856 |
| 9 | 3.1 | Núcleo de liquidação instantânea |  | 108d | 2026-05-04 A | 2026-09-30 | 6SF+0.67d | 82% | 19.5d | 2026-04-27 | 2026-09-11 | 100d | Yuri Bencardino; Nina Salgado [50%] | 15600h | 12792h | 29,800 | 29,000 | 24,436 |
| 10 | 3.2 | Gestão de chaves e integração com o DICT |  | 99d | 2026-06-01 A | 2026-10-16 | 9SF+0.33d | 70% | 29.75d | 2026-05-25 | 2026-09-30 | 95d | Vera Pontes | 9200h | 6440h | 17,400 | 17,000 | 12,180 |
| 11 | 3.3 | Antifraude e limites transacionais |  | 97d | 2026-07-02 A | 2026-11-13 | 7 | 40% | 58.25d | 2026-06-22 | 2026-10-16 | 85d | Ivo Trancoso | 8400h | 3360h | 15,600 | 15,200 | 6,240 |
| 12 | 3.4 | Marco — Motor pronto para homologação | milestone | 0d | 2026-11-16 | 2026-11-16 | 11 |  |  | 2026-10-19 | 2026-10-19 | 0d |  |  |  |  |  |  |
| 13 | 4 | **Testes e Homologação** |  | 120d | 2026-07-20 A | 2027-01-04 |  | 11% |  | 2026-07-13 | 2026-12-01 | 100d |  | 9000h | 1020h | 16,000 | 15,600 | 1,770 |
| 14 | 4.1 | Testes integrados e de carga transacional |  | 96d | 2026-07-20 A | 2026-11-30 | 9SF+0.92d | 15% | 81.62d | 2026-07-13 | 2026-10-30 | 80d | Emi Kobayashi | 6800h | 1020h | 11,800 | 11,500 | 1,770 |
| 15 | 4.2 | Homologação no ambiente do arranjo |  | 33d | 2026-11-17 | 2026-12-31 | 12 |  |  | 2026-10-20 | 2026-11-30 | 29d | Emi Kobayashi | 2200h |  | 4,200 | 4,100 |  |
| 16 | 4.3 | Marco — Certificação de homologação obtida | milestone | 0d | 2027-01-04 | 2027-01-04 | 15 |  |  | 2026-12-01 | 2026-12-01 | 0d |  |  |  |  |  |  |
| 17 | 5 | **Implantação** |  | 15d | 2027-01-05 | 2027-01-23 |  |  |  | 2026-12-02 | 2026-12-18 | 17d |  | 1000h |  | 1,900 | 2,300 |  |
| 18 | 5.1 | Cutover assistido e go-live |  | 14d | 2027-01-05 | 2027-01-22 | 16 |  |  | 2026-12-02 | 2026-12-17 | 16d | Nina Salgado | 1000h |  | 1,900 | 2,300 |  |
| 19 | 5.2 | Marco — Go-live Pix concluído | milestone | 0d | 2027-01-23 | 2027-01-23 | 18 |  |  | 2026-12-18 | 2026-12-18 | 0d |  |  |  |  |  |  |
