# Programa Zero Trust — Onda 1

Schedule from Primavera P6, 2025-11-03 to 2026-12-15, data date 2026-07-31, A marks actual dates.
Onda 1 do programa Zero Trust: segmentacao de rede, identidade forte e microssegmentacao dos ambientes criticos.
Must finish by 2026-12-15

## Schedule

| ID | WBS | Activity | Type | Duration | Start | Finish | Predecessors | Complete | Remaining | Planned start | Planned finish |
| --- | --- | --- | --- | --- | --- | --- | --- | --- | --- | --- | --- |
|  | ZT | **Programa Zero Trust — Onda 1** |  |  | 2025-11-03 | 2026-12-15 |  |  |  |  |  |
| ZT1000 |  | Kickoff do programa e alinhamento com o comite | milestone | 0d | 2025-11-03 A | 2025-11-03 A |  | 100% |  |  |  |
|  | ZT.1 | **Descoberta e arquitetura** |  |  | 2025-11-04 | 2026-04-06 |  |  |  |  |  |
| ZT1010 |  | Inventario de ativos e superficie de exposicao |  | 55d | 2025-11-04 A | 2026-02-06 A | ZT1000 | 100% |  | 2025-11-04 | 2026-01-16 |
| ZT1020 |  | Arquitetura de referencia Zero Trust |  | 40d | 2026-02-09 A | 2026-04-03 A | ZT1010 | 100% |  | 2026-01-19 | 2026-03-13 |
| ZT1030 |  | G2 — Baseline de escopo e orcamento aprovada | milestone | 0d | 2026-04-06 A | 2026-04-06 A | ZT1020 | 100% |  | 2026-03-16 | 2026-03-16 |
|  | ZT.2 | **Identidade e acesso** |  |  | 2026-04-07 | 2026-09-25 |  |  |  |  |  |
| ZT2000 |  | Implantacao de MFA resistente a phishing |  | 55d | 2026-04-07 A | 2026-06-19 A | ZT1030 | 100% |  | 2026-03-17 | 2026-05-29 |
| ZT2010 |  | Revisao de acessos privilegiados (PAM) |  | 75d | 2026-05-25 A | 2026-08-14 | ZT2000 SS+20d | 68% | 0d | 2026-05-04 | 2026-08-14 |
| ZT2020 |  | Federacao de identidade com parceiros |  | 70d | 2026-06-22 A | 2026-09-11 | ZT2010 SS+20d | 42% | 0d | 2026-06-01 | 2026-09-11 |
| ZT2030 |  | Politica de acesso condicional por risco |  | 70d | 2026-07-06 A | 2026-09-25 | ZT2010 SS+30d | 28% | 0d | 2026-06-15 | 2026-09-25 |
|  | ZT.3 | **Segmentacao de rede** |  |  | 2026-04-07 | 2026-11-20 |  |  |  |  |  |
| ZT3000 |  | Desenho da microssegmentacao do datacenter |  | 45d | 2026-04-07 A | 2026-06-05 A | ZT1030 | 100% |  | 2026-03-17 | 2026-05-15 |
| ZT3010 |  | Piloto de microssegmentacao — ambiente de cartoes |  | 75d | 2026-06-08 A | 2026-08-28 | ZT3000 | 55% | 0d | 2026-05-18 | 2026-08-28 |
| ZT3020 |  | Rollout de microssegmentacao — onda A |  | 50d | 2026-08-31 | 2026-11-06 | ZT3010 |  |  |  |  |
| ZT3030 |  | Substituicao de regras legadas de firewall |  | 50d | 2026-09-14 | 2026-11-20 | ZT3020 SS+10d |  |  |  |  |
|  | ZT.4 | **Monitoracao e resposta** |  |  | 2026-06-22 | 2026-11-13 |  |  |  |  |  |
| ZT4000 |  | Integracao de telemetria no SIEM |  | 65d | 2026-06-22 A | 2026-09-04 | ZT3010 SS | 46% | 0d | 2026-06-01 | 2026-09-04 |
| ZT4010 |  | Casos de uso de deteccao para acesso anomalo |  | 40d | 2026-09-07 | 2026-10-30 | ZT4000 |  |  |  |  |
| ZT4020 |  | Exercicio de mesa com o time de resposta |  | 10d | 2026-11-02 | 2026-11-13 | ZT4010 |  |  |  |  |
|  | ZT.5 | **Governanca e encerramento** |  |  | 2026-06-19 | 2026-12-15 |  |  |  |  |  |
| ZT5000 |  | G3 — Autorizacao de rollout completo | milestone | 0d | 2026-06-19 A | 2026-06-19 A | ZT2000 | 100% |  | 2026-05-29 | 2026-05-29 |
| ZT5010 |  | Auditoria independente de conformidade |  | 15d | 2026-11-09 | 2026-11-27 | ZT3020 |  |  |  |  |
| ZT5020 |  | G4 — Aprovacao de go-live da onda 1 | milestone | 0d | 2026-11-30 | 2026-11-30 | ZT5010 |  |  |  |  |
| ZT5030 |  | Transferencia para sustentacao e licoes aprendidas |  | 10d | 2026-12-01 | 2026-12-11 | ZT5020 |  |  |  |  |
| ZT5040 |  | G5 — Encerramento formal da onda 1 | milestone | 0d | 2026-12-15 | 2026-12-15 | ZT5030 |  |  |  |  |
