# Migração para Nuvem — Onda 2

Schedule from Primavera P6, 2026-01-19 to 2027-05-28, data date 2026-07-31, costs in BRL, A marks actual dates.
Must finish by 2027-05-28

## Resources

| Resource | Group |
| --- | --- |
| Vera Pontes | labor |
| Yuri Bencardino | labor |
| Ivo Trancoso | labor |
| Emi Kobayashi | labor |
| Dara Loureiro | labor |

## Schedule

| ID | WBS | Activity | Type | Duration | Start | Finish | Predecessors | Complete | Remaining | Planned start | Planned finish | Resources | Cost | Actual cost |
| --- | --- | --- | --- | --- | --- | --- | --- | --- | --- | --- | --- | --- | --- | --- |
|  | GOV | **Governança e Planejamento** |  |  | 2026-01-19 | 2027-05-28 |  |  |  |  |  |  |  |  |
| A1000 |  | Mobilização e plano de migração |  | 40d | 2026-01-19 A | 2026-03-18 A |  | 100% |  | 2026-01-19 | 2026-03-13 | Vera Pontes [2400 h] | 420,000 | 448,000 |
| A1020 |  | Escritório do projeto e reporting mensal |  | 300d | 2026-03-23 A | 2027-05-28 | A1010 | 50% | 150d |  |  | Vera Pontes [5600 h] | 980,000 | 490,000 |
| A1010 |  | Marco — Gate G3 autorizado | milestone | 0d | 2026-03-25 A | 2026-03-25 A | A1000 | 100% |  | 2026-03-20 | 2026-03-20 |  |  |  |
| A1030 |  | Gestão de mudanças e comunicação |  | 135d | 2026-04-06 A | 2027-04-30 |  | 55% | 60.75d | 2026-04-01 | 2027-04-30 | Vera Pontes [2400 h] | 480,000 | 264,000 |
|  | AVA | **Avaliação e Desenho da Landing Zone** |  |  | 2026-02-02 | 2026-08-31 |  |  |  |  |  |  |  |  |
| A1100 |  | Inventário de aplicações e dependências |  | 80d | 2026-02-02 A | 2026-06-05 A | A1000 SS+5d | 100% |  | 2026-02-02 | 2026-05-29 | Yuri Bencardino [4000 h] | 980,000 | 1,046,000 |
| A1110 |  | Desenho da landing zone |  | 85d | 2026-03-09 A | 2026-07-10 A | A1100 SS+10d | 100% |  | 2026-03-02 | 2026-06-30 | Yuri Bencardino [4560 h] | 1,140,000 | 1,210,000 |
| A1120 |  | Padrões de segurança e rede na nuvem |  | 75d | 2026-04-06 A | 2026-07-24 A | A1110 SS+15d | 100% |  | 2026-04-01 | 2026-07-17 | Ivo Trancoso [3440 h] | 860,000 | 902,000 |
| A1140 |  | Plano de ondas e critérios de corte |  | 60d | 2026-06-08 A | 2026-08-31 | A1110 SS+50d | 95% | 3d | 2026-06-01 | 2026-08-31 | Vera Pontes [3000 h] | 540,000 | 513,000 |
| A1130 |  | Marco — Landing zone homologada | milestone | 0d | 2026-07-29 A | 2026-07-29 A | A1120 | 100% |  | 2026-07-27 | 2026-07-27 |  |  |  |
|  | MIG | **Migração de Cargas** |  |  | 2026-05-11 | 2027-05-03 |  |  |  |  |  |  |  |  |
|  | MIG-A | **Onda 2A — Aplicações de Canal** |  |  | 2026-05-11 | 2027-03-01 |  |  |  |  |  |  |  |  |
| A1200 |  | Preparação de ambientes — Onda 2A |  | 60d | 2026-05-11 A | 2026-07-31 A | A1110 SS+30d | 100% |  | 2026-05-04 | 2026-07-24 | Vera Pontes [4000 h] | 760,000 | 798,000 |
| A1210 |  | Refatoração de aplicações de canal |  | 130d | 2026-06-22 A | 2026-12-18 | A1200 SS+25d | 60% | 52d | 2026-06-15 | 2026-12-18 | Yuri Bencardino [8000 h] | 1,840,000 | 1,104,000 |
| A1220 |  | Migração dos serviços de canal |  | 125d | 2026-08-03 | 2027-01-29 | A1210 SS+30d |  |  |  |  |  |  |  |
| A1230 |  | Testes de aceitação — Onda 2A |  | 85d | 2026-11-02 | 2027-02-26 | A1220 SS+60d |  |  |  |  | Emi Kobayashi [4800 h] | 720,000 |  |
| A1240 |  | Marco — Onda 2A em produção | milestone | 0d | 2027-03-01 | 2027-03-01 | A1230 |  |  |  |  |  |  |  |
|  | MIG-B | **Onda 2B — Bases de Dados** |  |  | 2026-06-15 | 2027-05-03 |  |  |  |  |  |  |  |  |
| A1300 |  | Perfilagem e classificação de bases |  | 85d | 2026-06-15 A | 2026-09-30 | A1100 | 80% | 17d | 2026-06-01 | 2026-09-30 | Dara Loureiro [3200 h] | 640,000 | 512,000 |
| A1310 |  | Replicação e sincronização de dados |  | 125d | 2026-09-01 | 2027-02-26 | A1300 SS+60d |  |  |  |  |  |  |  |
| A1320 |  | Migração das bases críticas |  | 100d | 2026-12-01 | 2027-04-16 | A1310 SS+60d |  |  |  |  | Dara Loureiro [9950 h] | 1,990,000 |  |
| A1330 |  | Ensaios de reversão e contingência |  | 65d | 2027-02-01 | 2027-04-30 |  |  |  |  |  |  |  |  |
| A1340 |  | Marco — Onda 2B em produção | milestone | 0d | 2027-05-03 | 2027-05-03 | A1330 |  |  |  |  |  |  |  |

| ID | WBS | Activity | Type | Duration | Start | Finish | Predecessors |
| --- | --- | --- | --- | --- | --- | --- | --- |
|  | EST | **Estabilização e Encerramento** |  |  | 2027-03-01 | 2027-05-28 |  |
| A1400 |  | Otimização de custos de nuvem (FinOps) |  | 55d | 2027-03-01 | 2027-05-14 |  |
| A1410 |  | Transferência para sustentação |  | 37d | 2027-04-01 | 2027-05-21 |  |
| A1420 |  | Descomissionamento dos ambientes legados |  | 30d | 2027-04-19 | 2027-05-27 |  |
| A1430 |  | Lições aprendidas e encerramento |  | 9d | 2027-05-17 | 2027-05-27 |  |
| A1440 |  | Marco — Encerramento da Onda 2 | milestone | 0d | 2027-05-28 | 2027-05-28 | A1430 |
