# PRJ-0601 — Adequação Open Finance — Fase 3

Schedule from MS Project XML, 2026-09-14 to 2027-07-30, status date 2026-07-31, costs in R$.
Programa Modernização do Core Bancário (PRG-01)
Nortávia Serviços Financeiros S.A.

## Calendars

- Padrão Nortávia 5x8: Mon-Fri 08:00-12:00, 13:00-17:00; Sat-Sun off.

## Resources

| Resource | Group | Rate |
| --- | --- | --- |
| Kito Ferrara | PMO | 150 |
| Yuri Bencardino | Arquitetura | 230 |
| Sol Verissimo | Negócio | 130 |
| Ivo Trancoso | Segurança | 240 |
| Emi Kobayashi | Qualidade | 140 |

## Schedule

| ID | WBS | Task | Type | Duration | Start | Finish | Predecessors | Baseline start | Baseline finish | Baseline duration | Resources | Work | Cost | Baseline cost |
| --- | --- | --- | --- | --- | --- | --- | --- | --- | --- | --- | --- | --- | --- | --- |
| 1 | 1 | **Iniciação e Business Case** |  | 35d | 2026-09-14 | 2026-10-30 |  | 2026-09-14 | 2026-10-30 | 35d |  | 1200h | 2,400 | 2,400 |
| 2 | 1.1 | Business case e aprovação orçamentária |  | 30d | 2026-09-14 | 2026-10-23 |  | 2026-09-14 | 2026-10-23 | 30d | Kito Ferrara | 1200h | 2,400 | 2,400 |
| 3 | 1.2 | Gate G1 — Business case aprovado | milestone | 0d | 2026-10-30 | 2026-10-30 | 2 | 2026-10-30 | 2026-10-30 | 0d |  |  |  |  |
| 4 | 2 | **Planejamento** |  | 35d | 2026-11-02 | 2026-12-18 |  | 2026-11-02 | 2026-12-18 | 35d |  | 2000h | 3,800 | 3,800 |
| 5 | 2.1 | Plano integrado e baseline de cronograma |  | 30d | 2026-11-02 | 2026-12-11 | 3 | 2026-11-02 | 2026-12-11 | 30d | Kito Ferrara | 2000h | 3,800 | 3,800 |
| 6 | 2.2 | Gate G2 — Planejamento e baseline aprovados | milestone | 0d | 2026-12-18 | 2026-12-18 | 5 | 2026-12-18 | 2026-12-18 | 0d |  |  |  |  |
| 7 | 3 | **Adequação Técnica** |  | 112d | 2027-01-04 | 2027-06-07 |  | 2027-01-04 | 2027-06-07 | 112d |  | 21800h | 40,800 | 40,800 |
| 8 | 3.1 | Atualização das APIs de compartilhamento de dados |  | 85d | 2027-01-04 | 2027-04-30 | 6 | 2027-01-04 | 2027-04-30 | 85d | Yuri Bencardino [50%]; Sol Verissimo | 7600h | 14,200 | 14,200 |
| 9 | 3.2 | Consentimento e gestão de escopo de dados |  | 75d | 2027-02-01 | 2027-05-14 | 8SF+0.33d | 2027-02-01 | 2027-05-14 | 75d | Ivo Trancoso [50%] | 5200h | 9,800 | 9,800 |
| 10 | 3.3 | Serviços de iniciação de transação de pagamento |  | 78d | 2027-02-15 | 2027-06-02 | 8SF+0.5d | 2027-02-15 | 2027-06-02 | 78d | Yuri Bencardino [50%] | 6800h | 12,600 | 12,600 |
| 11 | 3.4 | Diretório de participantes e ciclo de certificados |  | 60d | 2027-03-15 | 2027-06-04 | 9SF+0.5d | 2027-03-15 | 2027-06-04 | 60d | Ivo Trancoso [50%] | 2200h | 4,200 | 4,200 |
| 12 | 3.5 | Marco — Ambiente certificável concluído | milestone | 0d | 2027-06-07 | 2027-06-07 | 10, 11 | 2027-06-07 | 2027-06-07 | 0d |  |  |  |  |
| 13 | 4 | **Testes e Certificação** |  | 39d | 2027-06-08 | 2027-07-30 |  | 2027-06-08 | 2027-07-30 | 39d |  | 4800h | 7,800 | 7,800 |
| 14 | 4.1 | Testes funcionais e de conformidade |  | 29d | 2027-06-08 | 2027-07-16 | 12 | 2027-06-08 | 2027-07-16 | 29d | Emi Kobayashi | 3600h | 5,600 | 5,600 |
| 15 | 4.2 | Certificação junto ao diretório do ecossistema |  | 9d | 2027-07-19 | 2027-07-29 | 14 | 2027-07-19 | 2027-07-29 | 9d | Emi Kobayashi | 1200h | 2,200 | 2,200 |
| 16 | 4.3 | Marco — Certificação Fase 3 concluída | milestone | 0d | 2027-07-30 | 2027-07-30 | 15 | 2027-07-30 | 2027-07-30 | 0d |  |  |  |  |
